# 中联泰国园区DCOM平台项目

How a schedule from a web Gantt chart changed from version to version. A marks actual dates.

## Version 1 (saved 2025-12-29)

| ID | Task | Duration | Start | Finish |
| --- | --- | --- | --- | --- |
| 2 | DCOM系统合同签订 | 1d | 2025-12-30 | 2025-12-30 |

## Version 2 (saved 2025-12-29)

Last finish 2025-12-30 → 2026-07-01 (+183d).

Added:

| ID | Task | Duration | Start | Finish | Predecessors |
| --- | --- | --- | --- | --- | --- |
| 3 | 项目立项启动及启动会议 | 2d | 2026-01-13 | 2026-01-14 | 2 |
| 4 | DCOM系统硬件设备采购 | 20d | 2026-01-13 | 2026-02-01 | 2 |
| 5 | 硬件设备发货及海运报关 | 30d | 2026-02-02 | 2026-03-03 | 4 |
| 6 | 园区网络施工及设备安装 | 7d | 2026-03-04 | 2026-03-10 | 5 |
| 7 | 园区网络及设备调试 | 5d | 2026-03-11 | 2026-03-15 | 6 |
| 8 | DCOM平台环境部署 | 5d | 2026-03-16 | 2026-03-20 | 7 |
| 9 | 机房楼系统交付（一期-D1楼） | 92d | 2025-12-29 | 2026-03-30 |  |
| 10 | 机房楼系统交付（二期-D1楼） | 153d | 2025-12-29 | 2026-05-30 |  |
| 11 | 机房楼系统交付（D2楼） | 1d | 2025-12-30 | 2025-12-30 |  |
| 12 | DCOM平台南向数据接入（一期-D1楼） | 7d | 2026-03-31 | 2026-04-06 | 9 |
| 13 | DCOM平台南向数据接入（二期-D1楼） | 7d | 2026-05-31 | 2026-06-06 | 10 |
| 14 | DCOM平台数据上线（一期-D1楼） | 10d | 2026-04-07 | 2026-04-16 | 12 |
| 15 | DCOM平台数据上线（二期-D1楼） | 10d | 2026-06-07 | 2026-06-16 | 13 |
| 16 | DCOM北向数据上传（一期-D1楼） | 20d | 2026-04-07 | 2026-04-26 | 12 |
| 17 | DCOM北向数据上传（二期-D1楼） | 20d | 2026-06-07 | 2026-06-26 | 13 |
| 18 | DCOM平台北向数据验收（一期-D1楼） | 5d | 2026-04-27 | 2026-05-01 | 16 |
| 19 | DCOM平台北向数据验收（二期-D1楼） | 5d | 2026-06-27 | 2026-07-01 | 17 |
| 20 | DCOM平台监控功能上线（一期-D1楼） | 5d | 2026-04-17 | 2026-04-21 | 14 |
| 21 | DCOM平台监控功能上线（二期-D1楼） | 5d | 2026-06-17 | 2026-06-21 | 15 |
| 22 | DCOM平台访客功能上线 | 127d | 2026-02-24 | 2026-06-30 |  |
| 23 | DCOM平台运维功能开发 | 1d | 2025-12-30 | 2025-12-30 |  |
| 24 | DCOM平台功能阶段性交付 | 1d | 2025-12-30 | 2025-12-30 |  |
| 25 | DCOM平台验收测试 | 1d | 2025-12-30 | 2025-12-30 |  |
| 26 | DCOM平台培训及验收 | 1d | 2025-12-30 | 2025-12-30 |  |

Changed:

| ID | Task | Start | Finish | Duration |
| --- | --- | --- | --- | --- |
| 2 | DCOM系统合同签订 | 2025-12-30 → 2026-01-01 (+2d) | 2025-12-30 → 2026-01-12 (+13d) | 1d → 12d |

## Version 3 (saved 2025-12-30)

Last finish 2026-07-01 → 2026-10-30 (+121d).

Added:

| ID | Task | Duration | Start | Finish |
| --- | --- | --- | --- | --- |
| 24 | DCOM平台功能阶段性交付（1阶段） | 127d | 2026-02-24 | 2026-06-30 |
| 25 | DCOM平台功能阶段性交付（2阶段） | 62d | 2026-06-30 | 2026-08-30 |
| 26 | DCOM平台功能阶段性交付（3阶段） | 60d | 2026-09-01 | 2026-10-30 |

Removed: 24 DCOM平台功能阶段性交付

Changed:

| ID | Task | Start | Finish | Duration |
| --- | --- | --- | --- | --- |
| 23 | DCOM平台运维功能开发 | 2025-12-30 → 2026-02-24 (+56d) | 2025-12-30 → 2026-10-30 (+304d) | 1d → 249d |
| 27 | DCOM平台验收测试 | 2025-12-30 → 2026-10-26 (+300d) | 2025-12-30 → 2026-10-30 (+304d) | 1d → 5d |
| 28 | DCOM平台培训及验收 | 2025-12-30 → 2026-10-26 (+300d) | 2025-12-30 → 2026-10-30 (+304d) | 1d → 5d |
