# 中联马来园区DCOM平台

How a schedule from a web Gantt chart changed from version to version. A marks actual dates.

## Version 1 (saved 2025-12-29)

| ID | Task | Duration | Start | Finish |
| --- | --- | --- | --- | --- |
| 2 | DCOM系统合同签订 | 6d | 2025-12-30 | 2026-01-06 |
| 3 | DCOM系统硬件设备采购 | 1d | 2025-12-30 | 2025-12-30 |

## Version 2 (saved 2025-12-29)

Last finish 2026-01-06 → 2026-10-30 (+297d).

Added:

| ID | Task | Duration | Start | Finish | Predecessors |
| --- | --- | --- | --- | --- | --- |
| 3 | 项目立项启动及启动会议 | 2d | 2026-01-13 | 2026-01-14 | 2 |
| 5 | 硬件设备发货及海运报关 | 30d | 2026-02-08 | 2026-03-09 | 4 |
| 6 | 园区网络施工及设备安装 | 7d | 2026-03-10 | 2026-03-16 | 5 |
| 7 | 园区网络及设备调试 | 5d | 2026-03-17 | 2026-03-21 | 6 |
| 8 | DCOM平台环境部署 | 5d | 2026-03-22 | 2026-03-26 | 7 |
| 9 | 机房楼系统交付（1#楼） | 1d | 2026-01-30 | 2026-01-30 |  |
| 10 | 机房楼系统交付（2#楼） | 1d | 2025-12-30 | 2025-12-30 |  |
| 11 | 机房楼系统交付（3#楼） | 1d | 2025-12-30 | 2025-12-30 |  |
| 12 | 机房楼系统交付（4#楼） | 1d | 2025-12-30 | 2025-12-30 |  |
| 13 | DCOM平台南向数据接入（1#楼） | 7d | 2026-03-27 | 2026-04-02 | 8 |
| 14 | DCOM平台南向数据接入（2#楼） | 1d | 2025-12-30 | 2025-12-30 |  |
| 15 | DCOM平台南向数据接入（3#楼） | 1d | 2025-12-30 | 2025-12-30 |  |
| 16 | DCOM平台南向数据接入（4#楼） | 1d | 2025-12-30 | 2025-12-30 |  |
| 17 | DCOM平台数据上线（1#楼） | 10d | 2026-04-03 | 2026-04-12 | 13 |
| 18 | DCOM平台数据上线（2#楼） | 1d | 2025-12-30 | 2025-12-30 |  |
| 19 | DCOM平台数据上线（3#楼） | 1d | 2025-12-30 | 2025-12-30 |  |
| 20 | DCOM平台数据上线（4#楼） | 1d | 2025-12-30 | 2025-12-30 |  |
| 21 | DCOM北向数据上传（1#楼） | 20d | 2026-04-03 | 2026-04-22 | 13 |
| 22 | DCOM北向数据上传（2#楼） | 1d | 2025-12-30 | 2025-12-30 |  |
| 23 | DCOM北向数据上传（3#楼） | 1d | 2025-12-30 | 2025-12-30 |  |
| 24 | DCOM北向数据上传（4#楼） | 1d | 2025-12-30 | 2025-12-30 |  |
| 25 | DCOM平台北向数据验收（1#楼） | 5d | 2026-04-23 | 2026-04-27 | 21 |
| 26 | DCOM平台北向数据验收（2#楼） | 1d | 2026-05-28 | 2026-05-28 |  |
| 27 | DCOM平台监控功能上线 | 15d | 2026-04-13 | 2026-04-27 | 17 |
| 28 | DCOM平台运维功能开发 | 249d | 2026-02-24 | 2026-10-30 |  |
| 29 | DCOM平台功能阶段性交付（1阶段） | 127d | 2026-02-24 | 2026-06-30 |  |
| 30 | DCOM平台功能阶段性交付（2阶段） | 63d | 2026-06-30 | 2026-08-31 |  |
| 31 | DCOM平台功能阶段性交付（3阶段） | 60d | 2026-09-01 | 2026-10-30 |  |
| 32 | DCOM平台验收测试 | 5d | 2026-10-26 | 2026-10-30 |  |
| 33 | DCOM平台培训及验收 | 5d | 2026-10-26 | 2026-10-30 |  |

Changed:

| ID | Task | Start | Finish | Duration | Predecessors |
| --- | --- | --- | --- | --- | --- |
| 2 | DCOM系统合同签订 | 2025-12-30 → 2026-01-01 (+2d) | 2026-01-06 → 2026-01-12 (+6d) | 6d → 12d |  |
| 4 | DCOM系统硬件设备采购 | 2025-12-30 → 2026-01-19 (+20d) | 2025-12-30 → 2026-02-07 (+39d) | 1d → 20d | none → 2 |
